# L5Parte1a

How a schedule from MS Project changed from version to version. A marks actual dates.

## Version 1 (saved 2022-04-06, file L5Parte1a.mpp)

Note of the change: Merge branch 'main' of https://github.com/Camiletb/L1-GP

| ID | WBS | Task | Duration | Start | Finish | Predecessors | Total float |
| --- | --- | --- | --- | --- | --- | --- | --- |
| 1 | 1 | **Gestión proyecto** | 70d | 2022-01-03 | 2022-04-08 |  | 0d |
| 2 |  | Preparacion del proyecto | 60d | 2022-01-03 | 2022-03-25 |  | 0d |
| 3 |  | Aprobacion proyecto Portal | 0d | 2022-04-08 | 2022-04-08 | 2FS+10d | 0d |
| 4 | 2 | **VERSION 0: migración de servidores** | 73d | 2022-04-08 | 2022-07-20 | 3 | 0d |
| 5 |  | Adapatación Portal V0 | 45d | 2022-04-11 | 2022-06-10 |  | 362d |
| 6 | 2.2 | **Migración servidores** | 53d | 2022-04-08 | 2022-06-22 |  | 0d |
| 7 |  | Inicio migración servidores | 0d | 2022-04-08 | 2022-04-08 |  | 0d |
| 8 |  | Fin migración servidores | 0d | 2022-06-22 | 2022-06-22 | 7FS+53d | 0d |
| 9 |  | Versión 0 implantada | 0d | 2022-07-20 | 2022-07-20 | 8FS+20d | 0d |
| 10 | 3 | **VERSION 1: nuevas funcionalidades** | 314d | 2022-07-21 | 2023-10-03 | 9 | 0d |
| 11 |  | Matriz de requisitos | 20d | 2022-07-21 | 2022-08-17 |  | 0d |
| 12 | 3.2 | **Analisis funcional y de diseño** | 32d | 2022-08-18 | 2022-09-30 | 11 | 0d |
| 13 |  | Analisis de Requisitos | 2d | 2022-08-18 | 2022-08-19 |  | 0d |
| 14 |  | Inicio analisis y diseño | 0d | 2022-08-19 | 2022-08-19 | 13 | 0d |
| 15 |  | Verificación analisis y diseño | 3d | 2022-09-28 | 2022-09-30 | 16SF | 0d |
| 16 |  | Fin analisis y diseño | 0d | 2022-09-30 | 2022-09-30 | 14FS+30d | 0d |
| 17 | 3.3 | **DESARROLLO** | 185d | 2022-09-30 | 2023-06-16 | 12 | 0d |
| 18 | 3.3.1 | **Integración página web** | 90d | 2022-09-30 | 2023-02-03 |  | 0d |
| 19 | 3.3.1.1 | **Integración página web fase 1** | 65d | 2022-09-30 | 2022-12-30 |  | 0d |
| 20 |  | Inicio desarrollo fase 1 | 0d | 2022-09-30 | 2022-09-30 |  | 0d |
| 21 |  | Pruebas aceptación fase 1 | 10d | 2022-12-19 | 2022-12-30 | 22SF | 0d |
| 22 |  | Fin desarrollo fase 1 | 0d | 2022-12-30 | 2022-12-30 | 20FS+65d | 0d |
| 23 | 3.3.1.2 | **Integración página web fase 2** | 25d | 2022-12-30 | 2023-02-03 | 19 | 95d |
| 24 |  | Inicio desarrollo fase 2 | 0d | 2022-12-30 | 2022-12-30 |  | 95d |
| 25 |  | Fin desarrollo fase 2 | 0d | 2023-02-03 | 2023-02-03 | 24FS+25d | 95d |
| 26 |  | Desarrollo servicio comunes | 50d | 2023-01-02 | 2023-03-10 | 19 | 0d |
| 27 |  | Integración funciones CADIS | 50d | 2023-03-13 | 2023-05-19 | 26 | 0d |
| 28 |  | Desarrollo otras funciones | 20d | 2023-05-22 | 2023-06-16 | 27 | 0d |
| 29 | 3.4 | **PRUEBAS** | 52d | 2023-06-19 | 2023-08-29 | 17 | 0d |
| 30 |  | Pruebas unitarias y de integración | 5d | 2023-06-19 | 2023-06-23 |  | 0d |
| 31 |  | Pruebas de aceptación de usuario | 10d | 2023-07-10 | 2023-07-21 | 30FS+10d | 0d |
| 32 |  | Gestión de las modificaciones | 22d | 2023-07-24 | 2023-08-22 | 31 | 0d |
| 33 |  | Pruebas finales | 5d | 2023-08-23 | 2023-08-29 | 32 | 0d |
| 34 |  | Aceptación desarrollo VERSION 1 | 0d | 2023-08-29 | 2023-08-29 | 29 | 0d |
| 35 | 3.6 | **AUDITORIA VERSIÓN 1** | 15d | 2023-08-29 | 2023-09-19 | 34 | 0d |
| 36 |  | Inicio auditoria VERSION 1 | 0d | 2023-08-29 | 2023-08-29 |  | 0d |
| 37 |  | Fin auditoria VERSIÓN 1 | 0d | 2023-09-19 | 2023-09-19 | 36FS+15d | 0d |
| 38 |  | Implantación VERSIÓN 1 | 10d | 2023-09-20 | 2023-10-03 | 35 | 0d |
| 39 |  | Cierre Proyecto Portal | 0d | 2023-10-31 | 2023-10-31 | 38FS+20d | 0d |

## Version 2 (saved 2022-04-06, file L5Parte1b.mpp)

Note of the change: Merge branch 'main' of https://github.com/Camiletb/L1-GP

Last finish stays 2023-10-31.

Changed:

| ID | Task | Other |
| --- | --- | --- |
| 1 | **Gestión proyecto** | baseline start none → 2022-01-03; baseline finish none → 2022-04-08 |
| 2 | Preparacion del proyecto | baseline start none → 2022-01-03; baseline finish none → 2022-03-25 |
| 3 | Aprobacion proyecto Portal | baseline start none → 2022-04-08; baseline finish none → 2022-04-08 |
| 4 | **VERSION 0: migración de servidores** | baseline start none → 2022-04-08; baseline finish none → 2022-07-20 |
| 5 | Adapatación Portal V0 | baseline start none → 2022-04-11; baseline finish none → 2022-06-10 |
| 6 | **Migración servidores** | baseline start none → 2022-04-08; baseline finish none → 2022-06-22 |
| 7 | Inicio migración servidores | baseline start none → 2022-04-08; baseline finish none → 2022-04-08 |
| 8 | Fin migración servidores | baseline start none → 2022-06-22; baseline finish none → 2022-06-22 |
| 9 | Versión 0 implantada | baseline start none → 2022-07-20; baseline finish none → 2022-07-20 |
| 10 | **VERSION 1: nuevas funcionalidades** | baseline start none → 2022-07-21; baseline finish none → 2023-10-03 |
| 11 | Matriz de requisitos | baseline start none → 2022-07-21; baseline finish none → 2022-08-17 |
| 12 | **Analisis funcional y de diseño** | baseline start none → 2022-08-18; baseline finish none → 2022-09-30 |
| 13 | Analisis de Requisitos | baseline start none → 2022-08-18; baseline finish none → 2022-08-19 |
| 14 | Inicio analisis y diseño | baseline start none → 2022-08-19; baseline finish none → 2022-08-19 |
| 15 | Verificación analisis y diseño | baseline start none → 2022-09-28; baseline finish none → 2022-09-30 |
| 16 | Fin analisis y diseño | baseline start none → 2022-09-30; baseline finish none → 2022-09-30 |
| 17 | **DESARROLLO** | baseline start none → 2022-09-30; baseline finish none → 2023-06-16 |
| 18 | **Integración página web** | baseline start none → 2022-09-30; baseline finish none → 2023-02-03 |
| 19 | **Integración página web fase 1** | baseline start none → 2022-09-30; baseline finish none → 2022-12-30 |
| 20 | Inicio desarrollo fase 1 | baseline start none → 2022-09-30; baseline finish none → 2022-09-30 |
| 21 | Pruebas aceptación fase 1 | baseline start none → 2022-12-19; baseline finish none → 2022-12-30 |
| 22 | Fin desarrollo fase 1 | baseline start none → 2022-12-30; baseline finish none → 2022-12-30 |
| 23 | **Integración página web fase 2** | baseline start none → 2022-12-30; baseline finish none → 2023-02-03 |
| 24 | Inicio desarrollo fase 2 | baseline start none → 2022-12-30; baseline finish none → 2022-12-30 |
| 25 | Fin desarrollo fase 2 | baseline start none → 2023-02-03; baseline finish none → 2023-02-03 |
| 26 | Desarrollo servicio comunes | baseline start none → 2023-01-02; baseline finish none → 2023-03-10 |
| 27 | Integración funciones CADIS | baseline start none → 2023-03-13; baseline finish none → 2023-05-19 |
| 28 | Desarrollo otras funciones | baseline start none → 2023-05-22; baseline finish none → 2023-06-16 |
| 29 | **PRUEBAS** | baseline start none → 2023-06-19; baseline finish none → 2023-08-29 |
| 30 | Pruebas unitarias y de integración | baseline start none → 2023-06-19; baseline finish none → 2023-06-23 |
| 31 | Pruebas de aceptación de usuario | baseline start none → 2023-07-10; baseline finish none → 2023-07-21 |
| 32 | Gestión de las modificaciones | baseline start none → 2023-07-24; baseline finish none → 2023-08-22 |
| 33 | Pruebas finales | baseline start none → 2023-08-23; baseline finish none → 2023-08-29 |
| 34 | Aceptación desarrollo VERSION 1 | baseline start none → 2023-08-29; baseline finish none → 2023-08-29 |
| 35 | **AUDITORIA VERSIÓN 1** | baseline start none → 2023-08-29; baseline finish none → 2023-09-19 |
| 36 | Inicio auditoria VERSION 1 | baseline start none → 2023-08-29; baseline finish none → 2023-08-29 |
| 37 | Fin auditoria VERSIÓN 1 | baseline start none → 2023-09-19; baseline finish none → 2023-09-19 |
| 38 | Implantación VERSIÓN 1 | baseline start none → 2023-09-20; baseline finish none → 2023-10-03 |
| 39 | Cierre Proyecto Portal | baseline start none → 2023-10-31; baseline finish none → 2023-10-31 |

## Version 3 (data date 2022-01-31, saved 2022-04-06, file L5Parte2a.mpp)

Note of the change: Merge branch 'main' of https://github.com/Camiletb/L1-GP

Last finish stays 2023-10-31.

Changed:

| ID | Task | Start | Complete |
| --- | --- | --- | --- |
| 1 | **Gestión proyecto** | 2022-01-03 A | 0% → 35% |
| 2 | Preparacion del proyecto | 2022-01-03 A | 0% → 35% |

## Version 4 (data date 2022-02-28, saved 2022-04-06, file L5Parte2b.mpp)

Note of the change: Merge branch 'main' of https://github.com/Camiletb/L1-GP

Last finish 2023-10-31 → 2023-11-14 (+14d).

Changed:

| ID | Task | Start | Finish | Duration | Complete | Predecessors |
| --- | --- | --- | --- | --- | --- | --- |
| 1 | **Gestión proyecto** |  | 2022-04-08 → 2022-04-22 (+14d) | 70d → 80d | 35% → 71% |  |
| 2 | Preparacion del proyecto |  | 2022-03-25 → 2022-04-22 (+28d) | 60d → 80d | 35% → 71% |  |
| 3 | Aprobacion proyecto Portal | 2022-04-08 → 2022-04-22 (+14d) | 2022-04-08 → 2022-04-22 (+14d) |  |  | 2FS+10d → 2 |
| 4 | **VERSION 0: migración de servidores** | 2022-04-08 → 2022-04-22 (+14d) | 2022-07-20 → 2022-08-03 (+14d) |  |  |  |
| 5 | Adapatación Portal V0 | 2022-04-11 → 2022-04-25 (+14d) | 2022-06-10 → 2022-06-24 (+14d) |  |  |  |
| 6 | **Migración servidores** | 2022-04-08 → 2022-04-22 (+14d) | 2022-06-22 → 2022-07-06 (+14d) |  |  |  |
| 7 | Inicio migración servidores | 2022-04-08 → 2022-04-22 (+14d) | 2022-04-08 → 2022-04-22 (+14d) |  |  |  |
| 8 | Fin migración servidores | 2022-06-22 → 2022-07-06 (+14d) | 2022-06-22 → 2022-07-06 (+14d) |  |  |  |
| 9 | Versión 0 implantada | 2022-07-20 → 2022-08-03 (+14d) | 2022-07-20 → 2022-08-03 (+14d) |  |  |  |
| 10 | **VERSION 1: nuevas funcionalidades** | 2022-07-21 → 2022-08-04 (+14d) | 2023-10-03 → 2023-10-17 (+14d) |  |  |  |
| 11 | Matriz de requisitos | 2022-07-21 → 2022-08-04 (+14d) | 2022-08-17 → 2022-08-31 (+14d) |  |  |  |
| 12 | **Analisis funcional y de diseño** | 2022-08-18 → 2022-09-01 (+14d) | 2022-09-30 → 2022-10-14 (+14d) |  |  |  |
| 13 | Analisis de Requisitos | 2022-08-18 → 2022-09-01 (+14d) | 2022-08-19 → 2022-09-02 (+14d) |  |  |  |
| 14 | Inicio analisis y diseño | 2022-08-19 → 2022-09-02 (+14d) | 2022-08-19 → 2022-09-02 (+14d) |  |  |  |
| 15 | Verificación analisis y diseño | 2022-09-28 → 2022-10-12 (+14d) | 2022-09-30 → 2022-10-14 (+14d) |  |  |  |
| 16 | Fin analisis y diseño | 2022-09-30 → 2022-10-14 (+14d) | 2022-09-30 → 2022-10-14 (+14d) |  |  |  |
| 17 | **DESARROLLO** | 2022-09-30 → 2022-10-14 (+14d) | 2023-06-16 → 2023-06-30 (+14d) |  |  |  |
| 18 | **Integración página web** | 2022-09-30 → 2022-10-14 (+14d) | 2023-02-03 → 2023-02-17 (+14d) |  |  |  |
| 19 | **Integración página web fase 1** | 2022-09-30 → 2022-10-14 (+14d) | 2022-12-30 → 2023-01-13 (+14d) |  |  |  |
| 20 | Inicio desarrollo fase 1 | 2022-09-30 → 2022-10-14 (+14d) | 2022-09-30 → 2022-10-14 (+14d) |  |  |  |
| 21 | Pruebas aceptación fase 1 | 2022-12-19 → 2023-01-02 (+14d) | 2022-12-30 → 2023-01-13 (+14d) |  |  |  |
| 22 | Fin desarrollo fase 1 | 2022-12-30 → 2023-01-13 (+14d) | 2022-12-30 → 2023-01-13 (+14d) |  |  |  |
| 23 | **Integración página web fase 2** | 2022-12-30 → 2023-01-13 (+14d) | 2023-02-03 → 2023-02-17 (+14d) |  |  |  |
| 24 | Inicio desarrollo fase 2 | 2022-12-30 → 2023-01-13 (+14d) | 2022-12-30 → 2023-01-13 (+14d) |  |  |  |
| 25 | Fin desarrollo fase 2 | 2023-02-03 → 2023-02-17 (+14d) | 2023-02-03 → 2023-02-17 (+14d) |  |  |  |
| 26 | Desarrollo servicio comunes | 2023-01-02 → 2023-01-16 (+14d) | 2023-03-10 → 2023-03-24 (+14d) |  |  |  |
| 27 | Integración funciones CADIS | 2023-03-13 → 2023-03-27 (+14d) | 2023-05-19 → 2023-06-02 (+14d) |  |  |  |
| 28 | Desarrollo otras funciones | 2023-05-22 → 2023-06-05 (+14d) | 2023-06-16 → 2023-06-30 (+14d) |  |  |  |
| 29 | **PRUEBAS** | 2023-06-19 → 2023-07-03 (+14d) | 2023-08-29 → 2023-09-12 (+14d) |  |  |  |
| 30 | Pruebas unitarias y de integración | 2023-06-19 → 2023-07-03 (+14d) | 2023-06-23 → 2023-07-07 (+14d) |  |  |  |
| 31 | Pruebas de aceptación de usuario | 2023-07-10 → 2023-07-24 (+14d) | 2023-07-21 → 2023-08-04 (+14d) |  |  |  |
| 32 | Gestión de las modificaciones | 2023-07-24 → 2023-08-07 (+14d) | 2023-08-22 → 2023-09-05 (+14d) |  |  |  |
| 33 | Pruebas finales | 2023-08-23 → 2023-09-06 (+14d) | 2023-08-29 → 2023-09-12 (+14d) |  |  |  |
| 34 | Aceptación desarrollo VERSION 1 | 2023-08-29 → 2023-09-12 (+14d) | 2023-08-29 → 2023-09-12 (+14d) |  |  |  |
| 35 | **AUDITORIA VERSIÓN 1** | 2023-08-29 → 2023-09-12 (+14d) | 2023-09-19 → 2023-10-03 (+14d) |  |  |  |
| 36 | Inicio auditoria VERSION 1 | 2023-08-29 → 2023-09-12 (+14d) | 2023-08-29 → 2023-09-12 (+14d) |  |  |  |
| 37 | Fin auditoria VERSIÓN 1 | 2023-09-19 → 2023-10-03 (+14d) | 2023-09-19 → 2023-10-03 (+14d) |  |  |  |
| 38 | Implantación VERSIÓN 1 | 2023-09-20 → 2023-10-04 (+14d) | 2023-10-03 → 2023-10-17 (+14d) |  |  |  |
| 39 | Cierre Proyecto Portal | 2023-10-31 → 2023-11-14 (+14d) | 2023-10-31 → 2023-11-14 (+14d) |  |  |  |

## Version 5 (data date 2022-04-30, saved 2022-04-06, file L5Parte2c.mpp)

Note of the change: Practica 5

Last finish 2023-11-14 → 2023-11-21 (+7d). Complete tasks 0 → 2.

Changed:

| ID | Task | Start | Finish | Complete | Total float | Other |
| --- | --- | --- | --- | --- | --- | --- |
| 1 | **Gestión proyecto** |  | 2022-04-22 A | 71% → 100% | 0d → none |  |
| 2 | Preparacion del proyecto |  | 2022-04-22 A | 71% → 100% | 0d → none |  |
| 3 | Aprobacion proyecto Portal | 2022-04-22 A | 2022-04-22 A | 0% → 100% | 0d → none |  |
| 4 | **VERSION 0: migración de servidores** | 2022-04-22 → 2022-05-01 (+9d) | 2022-08-03 → 2022-08-10 (+7d) |  |  | constraint none → start no earlier than 2022-05-01 |
| 5 | Adapatación Portal V0 | 2022-04-25 → 2022-05-02 (+7d) | 2022-06-24 → 2022-07-01 (+7d) |  |  |  |
| 6 | **Migración servidores** | 2022-04-22 → 2022-05-01 (+9d) | 2022-07-06 → 2022-07-13 (+7d) |  |  |  |
| 7 | Inicio migración servidores | 2022-04-22 → 2022-05-01 (+9d) | 2022-04-22 → 2022-05-01 (+9d) |  |  |  |
| 8 | Fin migración servidores | 2022-07-06 → 2022-07-13 (+7d) | 2022-07-06 → 2022-07-13 (+7d) |  |  |  |
| 9 | Versión 0 implantada | 2022-08-03 → 2022-08-10 (+7d) | 2022-08-03 → 2022-08-10 (+7d) |  |  |  |
| 10 | **VERSION 1: nuevas funcionalidades** | 2022-08-04 → 2022-08-11 (+7d) | 2023-10-17 → 2023-10-24 (+7d) |  |  |  |
| 11 | Matriz de requisitos | 2022-08-04 → 2022-08-11 (+7d) | 2022-08-31 → 2022-09-07 (+7d) |  |  |  |
| 12 | **Analisis funcional y de diseño** | 2022-09-01 → 2022-09-08 (+7d) | 2022-10-14 → 2022-10-21 (+7d) |  |  |  |
| 13 | Analisis de Requisitos | 2022-09-01 → 2022-09-08 (+7d) | 2022-09-02 → 2022-09-09 (+7d) |  |  |  |
| 14 | Inicio analisis y diseño | 2022-09-02 → 2022-09-09 (+7d) | 2022-09-02 → 2022-09-09 (+7d) |  |  |  |
| 15 | Verificación analisis y diseño | 2022-10-12 → 2022-10-19 (+7d) | 2022-10-14 → 2022-10-21 (+7d) |  |  |  |
| 16 | Fin analisis y diseño | 2022-10-14 → 2022-10-21 (+7d) | 2022-10-14 → 2022-10-21 (+7d) |  |  |  |
| 17 | **DESARROLLO** | 2022-10-14 → 2022-10-21 (+7d) | 2023-06-30 → 2023-07-07 (+7d) |  |  |  |
| 18 | **Integración página web** | 2022-10-14 → 2022-10-21 (+7d) | 2023-02-17 → 2023-02-24 (+7d) |  |  |  |
| 19 | **Integración página web fase 1** | 2022-10-14 → 2022-10-21 (+7d) | 2023-01-13 → 2023-01-20 (+7d) |  |  |  |
| 20 | Inicio desarrollo fase 1 | 2022-10-14 → 2022-10-21 (+7d) | 2022-10-14 → 2022-10-21 (+7d) |  |  |  |
| 21 | Pruebas aceptación fase 1 | 2023-01-02 → 2023-01-09 (+7d) | 2023-01-13 → 2023-01-20 (+7d) |  |  |  |
| 22 | Fin desarrollo fase 1 | 2023-01-13 → 2023-01-20 (+7d) | 2023-01-13 → 2023-01-20 (+7d) |  |  |  |
| 23 | **Integración página web fase 2** | 2023-01-13 → 2023-01-20 (+7d) | 2023-02-17 → 2023-02-24 (+7d) |  |  |  |
| 24 | Inicio desarrollo fase 2 | 2023-01-13 → 2023-01-20 (+7d) | 2023-01-13 → 2023-01-20 (+7d) |  |  |  |
| 25 | Fin desarrollo fase 2 | 2023-02-17 → 2023-02-24 (+7d) | 2023-02-17 → 2023-02-24 (+7d) |  |  |  |
| 26 | Desarrollo servicio comunes | 2023-01-16 → 2023-01-23 (+7d) | 2023-03-24 → 2023-03-31 (+7d) |  |  |  |
| 27 | Integración funciones CADIS | 2023-03-27 → 2023-04-03 (+7d) | 2023-06-02 → 2023-06-09 (+7d) |  |  |  |
| 28 | Desarrollo otras funciones | 2023-06-05 → 2023-06-12 (+7d) | 2023-06-30 → 2023-07-07 (+7d) |  |  |  |
| 29 | **PRUEBAS** | 2023-07-03 → 2023-07-10 (+7d) | 2023-09-12 → 2023-09-19 (+7d) |  |  |  |
| 30 | Pruebas unitarias y de integración | 2023-07-03 → 2023-07-10 (+7d) | 2023-07-07 → 2023-07-14 (+7d) |  |  |  |
| 31 | Pruebas de aceptación de usuario | 2023-07-24 → 2023-07-31 (+7d) | 2023-08-04 → 2023-08-11 (+7d) |  |  |  |
| 32 | Gestión de las modificaciones | 2023-08-07 → 2023-08-14 (+7d) | 2023-09-05 → 2023-09-12 (+7d) |  |  |  |
| 33 | Pruebas finales | 2023-09-06 → 2023-09-13 (+7d) | 2023-09-12 → 2023-09-19 (+7d) |  |  |  |
| 34 | Aceptación desarrollo VERSION 1 | 2023-09-12 → 2023-09-19 (+7d) | 2023-09-12 → 2023-09-19 (+7d) |  |  |  |
| 35 | **AUDITORIA VERSIÓN 1** | 2023-09-12 → 2023-09-19 (+7d) | 2023-10-03 → 2023-10-10 (+7d) |  |  |  |
| 36 | Inicio auditoria VERSION 1 | 2023-09-12 → 2023-09-19 (+7d) | 2023-09-12 → 2023-09-19 (+7d) |  |  |  |
| 37 | Fin auditoria VERSIÓN 1 | 2023-10-03 → 2023-10-10 (+7d) | 2023-10-03 → 2023-10-10 (+7d) |  |  |  |
| 38 | Implantación VERSIÓN 1 | 2023-10-04 → 2023-10-11 (+7d) | 2023-10-17 → 2023-10-24 (+7d) |  |  |  |
| 39 | Cierre Proyecto Portal | 2023-11-14 → 2023-11-21 (+7d) | 2023-11-14 → 2023-11-21 (+7d) |  |  |  |

## Version 6 (data date 2022-04-30, saved 2022-04-06, file L5Parte2-LineaBase2.mpp)

Note of the change: Merge branch 'main' of https://github.com/Camiletb/L1-GP

Last finish stays 2023-11-21.

Changed:

| ID | Task | Other |
| --- | --- | --- |
| 1 | **Gestión proyecto** | baseline finish 2022-04-08 → 2022-04-22 |
| 2 | Preparacion del proyecto | baseline finish 2022-03-25 → 2022-04-22 |
| 3 | Aprobacion proyecto Portal | baseline start 2022-04-08 → 2022-04-22; baseline finish 2022-04-08 → 2022-04-22 |
| 4 | **VERSION 0: migración de servidores** | baseline start 2022-04-08 → 2022-05-01; baseline finish 2022-07-20 → 2022-08-10 |
| 5 | Adapatación Portal V0 | baseline start 2022-04-11 → 2022-05-02; baseline finish 2022-06-10 → 2022-07-01 |
| 6 | **Migración servidores** | baseline start 2022-04-08 → 2022-05-01; baseline finish 2022-06-22 → 2022-07-13 |
| 7 | Inicio migración servidores | baseline start 2022-04-08 → 2022-05-01; baseline finish 2022-04-08 → 2022-05-01 |
| 8 | Fin migración servidores | baseline start 2022-06-22 → 2022-07-13; baseline finish 2022-06-22 → 2022-07-13 |
| 9 | Versión 0 implantada | baseline start 2022-07-20 → 2022-08-10; baseline finish 2022-07-20 → 2022-08-10 |
| 10 | **VERSION 1: nuevas funcionalidades** | baseline start 2022-07-21 → 2022-08-11; baseline finish 2023-10-03 → 2023-10-24 |
| 11 | Matriz de requisitos | baseline start 2022-07-21 → 2022-08-11; baseline finish 2022-08-17 → 2022-09-07 |
| 12 | **Analisis funcional y de diseño** | baseline start 2022-08-18 → 2022-09-08; baseline finish 2022-09-30 → 2022-10-21 |
| 13 | Analisis de Requisitos | baseline start 2022-08-18 → 2022-09-08; baseline finish 2022-08-19 → 2022-09-09 |
| 14 | Inicio analisis y diseño | baseline start 2022-08-19 → 2022-09-09; baseline finish 2022-08-19 → 2022-09-09 |
| 15 | Verificación analisis y diseño | baseline start 2022-09-28 → 2022-10-19; baseline finish 2022-09-30 → 2022-10-21 |
| 16 | Fin analisis y diseño | baseline start 2022-09-30 → 2022-10-21; baseline finish 2022-09-30 → 2022-10-21 |
| 17 | **DESARROLLO** | baseline start 2022-09-30 → 2022-10-21; baseline finish 2023-06-16 → 2023-07-07 |
| 18 | **Integración página web** | baseline start 2022-09-30 → 2022-10-21; baseline finish 2023-02-03 → 2023-02-24 |
| 19 | **Integración página web fase 1** | baseline start 2022-09-30 → 2022-10-21; baseline finish 2022-12-30 → 2023-01-20 |
| 20 | Inicio desarrollo fase 1 | baseline start 2022-09-30 → 2022-10-21; baseline finish 2022-09-30 → 2022-10-21 |
| 21 | Pruebas aceptación fase 1 | baseline start 2022-12-19 → 2023-01-09; baseline finish 2022-12-30 → 2023-01-20 |
| 22 | Fin desarrollo fase 1 | baseline start 2022-12-30 → 2023-01-20; baseline finish 2022-12-30 → 2023-01-20 |
| 23 | **Integración página web fase 2** | baseline start 2022-12-30 → 2023-01-20; baseline finish 2023-02-03 → 2023-02-24 |
| 24 | Inicio desarrollo fase 2 | baseline start 2022-12-30 → 2023-01-20; baseline finish 2022-12-30 → 2023-01-20 |
| 25 | Fin desarrollo fase 2 | baseline start 2023-02-03 → 2023-02-24; baseline finish 2023-02-03 → 2023-02-24 |
| 26 | Desarrollo servicio comunes | baseline start 2023-01-02 → 2023-01-23; baseline finish 2023-03-10 → 2023-03-31 |
| 27 | Integración funciones CADIS | baseline start 2023-03-13 → 2023-04-03; baseline finish 2023-05-19 → 2023-06-09 |
| 28 | Desarrollo otras funciones | baseline start 2023-05-22 → 2023-06-12; baseline finish 2023-06-16 → 2023-07-07 |
| 29 | **PRUEBAS** | baseline start 2023-06-19 → 2023-07-10; baseline finish 2023-08-29 → 2023-09-19 |
| 30 | Pruebas unitarias y de integración | baseline start 2023-06-19 → 2023-07-10; baseline finish 2023-06-23 → 2023-07-14 |
| 31 | Pruebas de aceptación de usuario | baseline start 2023-07-10 → 2023-07-31; baseline finish 2023-07-21 → 2023-08-11 |
| 32 | Gestión de las modificaciones | baseline start 2023-07-24 → 2023-08-14; baseline finish 2023-08-22 → 2023-09-12 |
| 33 | Pruebas finales | baseline start 2023-08-23 → 2023-09-13; baseline finish 2023-08-29 → 2023-09-19 |
| 34 | Aceptación desarrollo VERSION 1 | baseline start 2023-08-29 → 2023-09-19; baseline finish 2023-08-29 → 2023-09-19 |
| 35 | **AUDITORIA VERSIÓN 1** | baseline start 2023-08-29 → 2023-09-19; baseline finish 2023-09-19 → 2023-10-10 |
| 36 | Inicio auditoria VERSION 1 | baseline start 2023-08-29 → 2023-09-19; baseline finish 2023-08-29 → 2023-09-19 |
| 37 | Fin auditoria VERSIÓN 1 | baseline start 2023-09-19 → 2023-10-10; baseline finish 2023-09-19 → 2023-10-10 |
| 38 | Implantación VERSIÓN 1 | baseline start 2023-09-20 → 2023-10-11; baseline finish 2023-10-03 → 2023-10-24 |
| 39 | Cierre Proyecto Portal | baseline start 2023-10-31 → 2023-11-21; baseline finish 2023-10-31 → 2023-11-21 |
