# L6Parte1a

How a schedule from MS Project changed from version to version. A marks actual dates.

## Version 1 (data date 2022-08-31, saved 2022-05-04, file L6Parte1a.mpp)

Note of the change: Merge branch 'main' of https://github.com/Camiletb/L1-GP

| ID | WBS | Task | Duration | Start | Finish | Predecessors | Complete | Total float | Constraint |
| --- | --- | --- | --- | --- | --- | --- | --- | --- | --- |
| 1 | 1 | **Gestión proyecto** | 80d | 2022-01-03 A | 2022-04-22 A |  | 100% |  |  |
| 2 |  | Preparacion del proyecto | 80d | 2022-01-03 A | 2022-04-22 A |  | 100% |  |  |
| 3 |  | Aprobacion proyecto Portal | 0d | 2022-04-22 A | 2022-04-22 A | 2 | 100% |  |  |
| 4 | 2 | **VERSION 0: migración de servidores** | 68d | 2022-05-01 A | 2022-08-03 A | 3 | 100% |  | start no earlier than 2022-05-01 |
| 5 |  | Adapatación Portal V0 | 55d | 2022-05-02 A | 2022-07-15 A |  | 100% |  |  |
| 6 | 2.2 | **Migración servidores** | 68d | 2022-05-01 A | 2022-08-03 A |  | 100% |  |  |
| 7 |  | Inicio migración servidores | 0d | 2022-05-01 A | 2022-05-01 A |  | 100% |  |  |
| 8 |  | Fin migración servidores | 0d | 2022-08-03 A | 2022-08-03 A | 7FS+68d | 100% |  |  |
| 9 |  | Versión 0 implantada | 0d | 2022-08-03 A | 2022-08-03 A | 8 | 100% |  |  |
| 10 | 3 | **VERSION 1: nuevas funcionalidades** | 318d | 2022-08-04 A | 2023-10-23 | 9 | 8% | 0d |  |
| 11 |  | Matriz de requisitos | 24d | 2022-08-04 A | 2022-09-06 |  | 71% | 0d |  |
| 12 | 3.2 | **Analisis funcional y de diseño** | 32d | 2022-09-07 | 2022-10-20 | 11 |  | 0d |  |
| 13 |  | Analisis de Requisitos | 2d | 2022-09-07 | 2022-09-08 |  |  | 0d |  |
| 14 |  | Inicio analisis y diseño | 0d | 2022-09-08 | 2022-09-08 | 13 |  | 0d |  |
| 15 |  | Verificación analisis y diseño | 3d | 2022-10-18 | 2022-10-20 | 16SF |  | 0d |  |
| 16 |  | Fin analisis y diseño | 0d | 2022-10-20 | 2022-10-20 | 14FS+30d |  | 0d |  |
| 17 | 3.3 | **DESARROLLO** | 185d | 2022-10-20 | 2023-07-06 | 12 |  | 0d |  |
| 18 | 3.3.1 | **Integración página web** | 90d | 2022-10-20 | 2023-02-23 |  |  | 0d |  |
| 19 | 3.3.1.1 | **Integración página web fase 1** | 65d | 2022-10-20 | 2023-01-19 |  |  | 0d |  |
| 20 |  | Inicio desarrollo fase 1 | 0d | 2022-10-20 | 2022-10-20 |  |  | 0d |  |
| 21 |  | Pruebas aceptación fase 1 | 10d | 2023-01-06 | 2023-01-19 | 22SF |  | 0d |  |
| 22 |  | Fin desarrollo fase 1 | 0d | 2023-01-19 | 2023-01-19 | 20FS+65d |  | 0d |  |
| 23 | 3.3.1.2 | **Integración página web fase 2** | 25d | 2023-01-19 | 2023-02-23 | 19 |  | 95d |  |
| 24 |  | Inicio desarrollo fase 2 | 0d | 2023-01-19 | 2023-01-19 |  |  | 95d |  |
| 25 |  | Fin desarrollo fase 2 | 0d | 2023-02-23 | 2023-02-23 | 24FS+25d |  | 95d |  |
| 26 |  | Desarrollo servicio comunes | 50d | 2023-01-20 | 2023-03-30 | 19 |  | 0d |  |
| 27 |  | Integración funciones CADIS | 50d | 2023-03-31 | 2023-06-08 | 26 |  | 0d |  |
| 28 |  | Desarrollo otras funciones | 20d | 2023-06-09 | 2023-07-06 | 27 |  | 0d |  |
| 29 | 3.4 | **PRUEBAS** | 52d | 2023-07-07 | 2023-09-18 | 17 |  | 0d |  |
| 30 |  | Pruebas unitarias y de integración | 5d | 2023-07-07 | 2023-07-13 |  |  | 0d |  |
| 31 |  | Pruebas de aceptación de usuario | 10d | 2023-07-28 | 2023-08-10 | 30FS+10d |  | 0d |  |
| 32 |  | Gestión de las modificaciones | 22d | 2023-08-11 | 2023-09-11 | 31 |  | 0d |  |
| 33 |  | Pruebas finales | 5d | 2023-09-12 | 2023-09-18 | 32 |  | 0d |  |
| 34 |  | Aceptación desarrollo VERSION 1 | 0d | 2023-09-18 | 2023-09-18 | 29 |  | 0d |  |
| 35 | 3.6 | **AUDITORIA VERSIÓN 1** | 15d | 2023-09-18 | 2023-10-09 | 34 |  | 0d |  |
| 36 |  | Inicio auditoria VERSION 1 | 0d | 2023-09-18 | 2023-09-18 |  |  | 0d |  |
| 37 |  | Fin auditoria VERSIÓN 1 | 0d | 2023-10-09 | 2023-10-09 | 36FS+15d |  | 0d |  |
| 38 |  | Implantación VERSIÓN 1 | 10d | 2023-10-10 | 2023-10-23 | 35 |  | 0d |  |
| 39 |  | Cierre Proyecto Portal | 0d | 2023-11-20 | 2023-11-20 | 38FS+20d |  | 0d |  |

## Version 2 (data date 2023-01-31, saved 2022-05-04, file L6Parte1b.mpp)

Note of the change: P6

Last finish 2023-11-20 → 2023-11-22 (+2d). Complete tasks 6 → 10.

Changed:

| ID | Task | Start | Finish | Duration | Complete | Total float |
| --- | --- | --- | --- | --- | --- | --- |
| 10 | **VERSION 1: nuevas funcionalidades** |  | 2023-10-23 → 2023-10-25 (+2d) | 318d → 320d | 8% → 18% |  |
| 12 | **Analisis funcional y de diseño** | 2022-09-07 A | 2022-10-20 → 2022-10-24 (+4d) | 32d → 34d | 0% → 71% |  |
| 13 | Analisis de Requisitos | 2022-09-07 A | 2022-09-08 → 2022-09-12 (+4d) | 2d → 4d | 0% → 71% | 0d → 30d |
| 14 | Inicio analisis y diseño | 2022-09-08 → 2022-09-12 (+4d) | 2022-09-08 → 2022-09-12 (+4d) |  |  | 0d → 30d |
| 15 | Verificación analisis y diseño | 2022-10-18 A | 2022-10-20 → 2022-10-24 (+4d) | 3d → 5d | 0% → 71% |  |
| 16 | Fin analisis y diseño | 2022-10-20 → 2022-10-24 A (+4d) | 2022-10-20 → 2022-10-24 A (+4d) |  | 0% → 100% | 0d → none |
| 17 | **DESARROLLO** | 2022-10-20 → 2022-10-24 A (+4d) | 2023-07-06 → 2023-07-10 (+4d) |  | 0% → 12% |  |
| 18 | **Integración página web** | 2022-10-20 → 2022-10-24 A (+4d) | 2023-02-23 → 2023-02-27 (+4d) |  | 0% → 99% | 0d → 95d |
| 19 | **Integración página web fase 1** | 2022-10-20 → 2022-10-24 A (+4d) | 2023-01-19 → 2023-01-23 A (+4d) |  | 0% → 100% | 0d → none |
| 20 | Inicio desarrollo fase 1 | 2022-10-20 → 2022-10-24 A (+4d) | 2022-10-20 → 2022-10-24 A (+4d) |  | 0% → 100% | 0d → none |
| 21 | Pruebas aceptación fase 1 | 2023-01-06 → 2023-01-10 A (+4d) | 2023-01-19 → 2023-01-23 A (+4d) |  | 0% → 100% | 0d → none |
| 22 | Fin desarrollo fase 1 | 2023-01-19 → 2023-01-23 A (+4d) | 2023-01-19 → 2023-01-23 A (+4d) |  | 0% → 100% | 0d → none |
| 23 | **Integración página web fase 2** | 2023-01-19 → 2023-01-23 (+4d) | 2023-02-23 → 2023-02-27 (+4d) |  |  |  |
| 24 | Inicio desarrollo fase 2 | 2023-01-19 → 2023-01-23 (+4d) | 2023-01-19 → 2023-01-23 (+4d) |  |  |  |
| 25 | Fin desarrollo fase 2 | 2023-02-23 → 2023-02-27 (+4d) | 2023-02-23 → 2023-02-27 (+4d) |  |  |  |
| 26 | Desarrollo servicio comunes | 2023-01-20 → 2023-01-24 A (+4d) | 2023-03-30 → 2023-04-03 (+4d) |  | 0% → 12% |  |
| 27 | Integración funciones CADIS | 2023-03-31 → 2023-04-04 (+4d) | 2023-06-08 → 2023-06-12 (+4d) |  |  |  |
| 28 | Desarrollo otras funciones | 2023-06-09 → 2023-06-13 (+4d) | 2023-07-06 → 2023-07-10 (+4d) |  |  |  |
| 29 | **PRUEBAS** | 2023-07-07 → 2023-07-11 (+4d) | 2023-09-18 → 2023-09-20 (+2d) |  |  |  |
| 30 | Pruebas unitarias y de integración | 2023-07-07 → 2023-07-11 (+4d) | 2023-07-13 → 2023-07-17 (+4d) |  |  |  |
| 31 | Pruebas de aceptación de usuario | 2023-07-28 → 2023-08-01 (+4d) | 2023-08-10 → 2023-08-14 (+4d) |  |  |  |
| 32 | Gestión de las modificaciones | 2023-08-11 → 2023-08-15 (+4d) | 2023-09-11 → 2023-09-13 (+2d) |  |  |  |
| 33 | Pruebas finales | 2023-09-12 → 2023-09-14 (+2d) | 2023-09-18 → 2023-09-20 (+2d) |  |  |  |
| 34 | Aceptación desarrollo VERSION 1 | 2023-09-18 → 2023-09-20 (+2d) | 2023-09-18 → 2023-09-20 (+2d) |  |  |  |
| 35 | **AUDITORIA VERSIÓN 1** | 2023-09-18 → 2023-09-20 (+2d) | 2023-10-09 → 2023-10-11 (+2d) |  |  |  |
| 36 | Inicio auditoria VERSION 1 | 2023-09-18 → 2023-09-20 (+2d) | 2023-09-18 → 2023-09-20 (+2d) |  |  |  |
| 37 | Fin auditoria VERSIÓN 1 | 2023-10-09 → 2023-10-11 (+2d) | 2023-10-09 → 2023-10-11 (+2d) |  |  |  |
| 38 | Implantación VERSIÓN 1 | 2023-10-10 → 2023-10-12 (+2d) | 2023-10-23 → 2023-10-25 (+2d) |  |  |  |
| 39 | Cierre Proyecto Portal | 2023-11-20 → 2023-11-22 (+2d) | 2023-11-20 → 2023-11-22 (+2d) |  |  |  |

## Version 3 (data date 2023-03-31, saved 2022-05-04, file L6Parte1c.mpp)

Note of the change: Merge branch 'main' of https://github.com/Camiletb/L1-GP

Last finish stays 2023-11-22. Complete tasks 10 → 14.

Added:

| ID | Task | Duration | Start | Finish | Predecessors | Constraint | Resources |
| --- | --- | --- | --- | --- | --- | --- | --- |
| 39 | Matriz de requisitos 2 | 10d | 2023-05-01 | 2023-05-12 |  | start no earlier than 2023-05-01 | Analista |
| 40 | Analisis de requisitos 2 | 2d | 2023-05-15 | 2023-05-16 | 39 |  | Analista |
| 41 | Verificacion analisis y diseño 2 | 2d | 2023-05-31 | 2023-06-01 | 40FS+10d |  | Analista |

Changed:

| ID | Task | Start | Finish | Duration | Complete | Total float | Predecessors |
| --- | --- | --- | --- | --- | --- | --- | --- |
| 10 | **VERSION 1: nuevas funcionalidades** |  |  |  | 18% → 37% |  |  |
| 11 | Matriz de requisitos |  | 2022-09-06 → 2022-08-31 A (-6d) | 24d → 20d | 71% → 100% | 0d → none |  |
| 12 | **Analisis funcional y de diseño** | 2022-09-07 A → 2022-09-01 A (-6d) |  | 34d → 38d | 71% → 99% |  |  |
| 13 | Analisis de Requisitos | 2022-09-07 A → 2022-09-01 A (-6d) | 2022-09-12 → 2022-09-06 A (-6d) |  | 71% → 100% | 30d → none |  |
| 14 | Inicio analisis y diseño | 2022-09-12 → 2022-09-06 (-6d) | 2022-09-12 → 2022-09-06 (-6d) |  |  | 30d → 34d |  |
| 15 | Verificación analisis y diseño |  | 2022-10-24 A |  | 71% → 100% | 0d → none |  |
| 17 | **DESARROLLO** |  |  |  | 12% → 38% |  |  |
| 18 | **Integración página web** |  | 2023-02-27 → 2023-03-13 (+14d) | 90d → 100d |  | 95d → 85d |  |
| 23 | **Integración página web fase 2** | 2023-01-23 A | 2023-02-27 → 2023-03-13 (+14d) | 25d → 35d |  | 95d → 85d |  |
| 25 | Fin desarrollo fase 2 | 2023-02-27 → 2023-03-13 A (+14d) | 2023-02-27 → 2023-03-13 A (+14d) |  | 0% → 100% | 95d → none | 24FS+25d → 24FS+35d |
| 26 | Desarrollo servicio comunes |  |  |  | 12% → 78% |  |  |

## Version 4 (data date 2023-05-31, saved 2022-05-04, file L6Parte1d.mpp)

Note of the change: P6

Last finish stays 2023-11-22. Complete tasks 14 → 17.

Changed:

| ID | Task | Start | Finish | Complete | Total float |
| --- | --- | --- | --- | --- | --- |
| 10 | **VERSION 1: nuevas funcionalidades** |  |  | 37% → 56% |  |
| 17 | **DESARROLLO** |  |  | 38% → 68% |  |
| 26 | Desarrollo servicio comunes |  | 2023-04-03 A | 78% → 100% | 0d → none |
| 27 | Integración funciones CADIS | 2023-04-04 A |  | 0% → 57% |  |
| 39 | Matriz de requisitos 2 | 2023-05-01 A | 2023-05-12 A | 0% → 100% | 124d → none |
| 40 | Analisis de requisitos 2 | 2023-05-15 A | 2023-05-16 A | 0% → 100% | 124d → none |
| 41 | Verificacion analisis y diseño 2 | 2023-05-31 A |  | 0% → 50% |  |

## Version 5 (data date 2023-07-31, saved 2022-05-04, file L6Parte1e.mpp)

Note of the change: P6

Last finish 2023-11-22 → 2023-10-27 (-26d). Complete tasks 17 → 21.

Changed:

| ID | Task | Start | Finish | Complete | Total float | Predecessors |
| --- | --- | --- | --- | --- | --- | --- |
| 10 | **VERSION 1: nuevas funcionalidades** |  |  | 56% → 78% |  |  |
| 17 | **DESARROLLO** |  |  | 68% → 99% |  |  |
| 27 | Integración funciones CADIS |  | 2023-06-12 A | 57% → 100% | 0d → none |  |
| 28 | Desarrollo otras funciones | 2023-06-13 A | 2023-07-10 A | 0% → 100% | 0d → none |  |
| 29 | **PRUEBAS** | 2023-07-11 A |  | 0% → 12% |  |  |
| 30 | Pruebas unitarias y de integración | 2023-07-11 A | 2023-07-17 A | 0% → 100% | 0d → none |  |
| 41 | Verificacion analisis y diseño 2 |  | 2023-06-01 A | 50% → 100% | 124d → none |  |
| 42 | Cierre Proyecto Portal | 2023-11-22 → 2023-10-27 (-26d) | 2023-11-22 → 2023-10-27 (-26d) |  |  | 38FS+20d → 38FS+2d |

## Version 6 (data date 2023-10-05, saved 2022-05-04, file L6Parte1f.mpp)

Note of the change: Merge branch 'main' of https://github.com/Camiletb/L1-GP

Last finish 2023-10-27 → 2023-10-05 (-22d).

Changed:

| ID | Task | Start | Finish | Duration | Complete | Predecessors | Other |
| --- | --- | --- | --- | --- | --- | --- | --- |
| 10 | **VERSION 1: nuevas funcionalidades** |  | 2023-10-25 → 2023-10-03 (-22d) | 320d → 304d | 78% → 82% |  |  |
| 29 | **PRUEBAS** |  | 2023-09-20 → 2023-09-06 (-14d) | 52d → 42d | 12% → 16% |  |  |
| 31 | Pruebas de aceptación de usuario |  | 2023-08-14 → 2023-08-03 (-11d) | 10d → 2.5d |  |  | resources Analista → Analista; Analista 2 |
| 32 | Gestión de las modificaciones | 2023-08-15 → 2023-08-03 (-12d) | 2023-09-13 → 2023-09-04 (-9d) |  |  |  |  |
| 33 | Pruebas finales | 2023-09-14 → 2023-09-04 (-10d) | 2023-09-20 → 2023-09-06 (-14d) | 5d → 2.5d |  |  | resources Analista → Analista; Analista 2 |
| 34 | Aceptación desarrollo VERSION 1 | 2023-09-20 → 2023-09-06 (-14d) | 2023-09-20 → 2023-09-06 (-14d) |  |  |  |  |
| 35 | **AUDITORIA VERSIÓN 1** | 2023-09-20 → 2023-09-06 (-14d) | 2023-10-11 → 2023-09-19 (-22d) | 15d → 9d |  |  |  |
| 36 | Inicio auditoria VERSION 1 | 2023-09-20 → 2023-09-06 (-14d) | 2023-09-20 → 2023-09-06 (-14d) |  |  |  |  |
| 37 | Fin auditoria VERSIÓN 1 | 2023-10-11 → 2023-09-19 (-22d) | 2023-10-11 → 2023-09-19 (-22d) |  |  | 36FS+15d → 36FS+9d |  |
| 38 | Implantación VERSIÓN 1 | 2023-10-12 → 2023-09-20 (-22d) | 2023-10-25 → 2023-10-03 (-22d) |  |  |  |  |
| 42 | Cierre Proyecto Portal | 2023-10-27 → 2023-10-05 (-22d) | 2023-10-27 → 2023-10-05 (-22d) |  |  |  |  |

## Version 7 (data date 2023-10-05, saved 2022-05-04, file L6Parte1f.mpp)

Note of the change: Update L6Parte1f.mpp

Last finish 2023-10-05 → 2023-10-04 (-1d).

Changed:

| ID | Task | Start | Finish | Duration | Predecessors |
| --- | --- | --- | --- | --- | --- |
| 10 | **VERSION 1: nuevas funcionalidades** |  | 2023-10-03 → 2023-10-02 (-1d) | 304d → 303d |  |
| 35 | **AUDITORIA VERSIÓN 1** |  | 2023-09-19 → 2023-09-18 (-1d) | 9d → 8d |  |
| 37 | Fin auditoria VERSIÓN 1 | 2023-09-19 → 2023-09-18 (-1d) | 2023-09-19 → 2023-09-18 (-1d) |  | 36FS+9d → 36FS+8d |
| 38 | Implantación VERSIÓN 1 | 2023-09-20 → 2023-09-19 (-1d) | 2023-10-03 → 2023-10-02 (-1d) |  |  |
| 42 | Cierre Proyecto Portal | 2023-10-05 → 2023-10-04 (-1d) | 2023-10-05 → 2023-10-04 (-1d) |  |  |
